# FLEXIT_ReadyToOptimize_MatthewPhyland

How a schedule from MS Project changed from version to version. A marks actual dates.

## Version 1 (saved 2020-03-30, file FLEXIT_ReadyToOptimize_MatthewPhyland.mpp)

Note of the change: week 6 complete

| ID | WBS | Task | Duration | Start | Finish | Predecessors | Total float | Constraint |
| --- | --- | --- | --- | --- | --- | --- | --- | --- |
| 1 | 0 | **FlexIT Initial** | 80.75d | 2020-04-06 | 2020-07-27 |  | 0d |  |
| 2 | 1 | **Planning** | 7.5d | 2020-04-06 | 2020-04-15 |  | 0d |  |
| 3 |  | Problem Definition | 12h | 2020-04-06 | 2020-04-07 |  | 0d |  |
| 4 |  | Feasibility Study | 48h | 2020-04-07 | 2020-04-15 | 3 | 0d |  |
| 5 | 2 | **Analysis** | 12.5d | 2020-04-15 | 2020-05-01 |  | 0d |  |
| 6 |  | Technical Analysis | 10h | 2020-04-15 | 2020-04-16 | 4 | 43.5d |  |
| 7 |  | System Analysis | 100h | 2020-04-15 | 2020-05-01 | 4 | 0d |  |
| 8 | 3 | **Design** | 22.5d | 2020-05-04 | 2020-06-03 |  | 0d |  |
| 9 |  | Technical Design | 20h | 2020-06-01 | 2020-06-03 | 6 | 12.25d | start no earlier than 2020-06-01 |
| 10 | 3.2 | **Software Design** | 6d | 2020-05-04 | 2020-05-11 |  | 0d |  |
| 11 |  | System Design - Enrol. | 48h | 2020-05-04 | 2020-05-11 | 7 | 0d |  |
| 12 |  | System Design - Assess. | 48h | 2020-05-04 | 2020-05-11 | 7 | 7.5d |  |
| 13 |  | System Design - Report. | 48h | 2020-05-04 | 2020-05-11 | 7 | 7.5d |  |
| 14 | 4 | **Programming** | 32.5d | 2020-05-12 | 2020-06-25 |  | 0d |  |
| 15 |  | System Prog. - Enrol. | 260h | 2020-05-12 | 2020-06-25 | 11 | 0d |  |
| 16 |  | System Prog. - Assess. | 200h | 2020-05-12 | 2020-06-15 | 12 | 7.5d |  |
| 17 |  | System Prog. - Report. | 200h | 2020-05-12 | 2020-06-15 | 13 | 7.5d |  |
| 18 | 5 | **Implementation** | 17.25d | 2020-06-03 | 2020-06-26 |  | 0d |  |
| 19 |  | Hardware implementation | 30h | 2020-06-03 | 2020-06-09 | 9 | 12.25d |  |
| 20 |  | Software implementation | 10h | 2020-06-25 | 2020-06-26 | 19, 15, 16, 17 | 0d |  |
| 21 | 6 | **Testing** | 17d | 2020-06-26 | 2020-07-21 |  | 0d |  |
| 22 |  | Enrol. System Testing | 136h | 2020-06-26 | 2020-07-21 | 20 | 0d |  |
| 23 |  | Assess. System Testing | 136h | 2020-06-26 | 2020-07-21 | 20 | 0d |  |
| 24 |  | Report. System Testing | 136h | 2020-06-26 | 2020-07-21 | 20 | 0d |  |
| 25 |  | User Training | 32h | 2020-07-21 | 2020-07-27 | 22, 23, 24 | 0d |  |

## Version 2 (saved 2020-03-30, file FLEXIT_Optimised_MatthewPhyland.mpp)

Note of the change: week 6 complete

Last finish 2020-07-27 → 2020-07-20 (-7d).

Changed:

| ID | Task | Start | Finish | Duration | Other |
| --- | --- | --- | --- | --- | --- |
| 1 | **FlexIT Initial** |  | 2020-07-27 → 2020-07-20 (-7d) | 80.75d → 75.75d |  |
| 14 | **Programming** |  | 2020-06-25 → 2020-06-18 (-7d) | 32.5d → 27.5d |  |
| 15 | System Prog. - Enrol. |  | 2020-06-25 → 2020-06-18 (-7d) | 260h → 220h | resources Jenny [16%]; Sue → Jenny [19%]; Sue; James; Cont. Prog. |
| 18 | **Implementation** |  | 2020-06-26 → 2020-06-19 (-7d) | 17.25d → 12.25d |  |
| 20 | Software implementation | 2020-06-25 → 2020-06-18 (-7d) | 2020-06-26 → 2020-06-19 (-7d) |  |  |
| 21 | **Testing** | 2020-06-26 → 2020-06-19 (-7d) | 2020-07-21 → 2020-07-14 (-7d) |  |  |
| 22 | Enrol. System Testing | 2020-06-26 → 2020-06-19 (-7d) | 2020-07-21 → 2020-07-14 (-7d) |  |  |
| 23 | Assess. System Testing | 2020-06-26 → 2020-06-19 (-7d) | 2020-07-21 → 2020-07-14 (-7d) |  |  |
| 24 | Report. System Testing | 2020-06-26 → 2020-06-19 (-7d) | 2020-07-21 → 2020-07-14 (-7d) |  |  |
| 25 | User Training | 2020-07-21 → 2020-07-14 (-7d) | 2020-07-27 → 2020-07-20 (-7d) |  |  |

## Version 3 (saved 2020-03-30, file FLEXIT_Materials_MatthewPhyland.mpp)

Note of the change: week 6 complete

Last finish stays 2020-07-20.

Changed:

| ID | Task | Other |
| --- | --- | --- |
| 19 | Hardware implementation | resources Roy → Roy; Computer Workstations [1000%] |

## Version 4 (saved 2020-03-30, file FLEXIT_Baselined_MatthewPhyland.mpp)

Note of the change: week 6 complete

Last finish stays 2020-07-20.

Changed:

| ID | Task | Other |
| --- | --- | --- |
| 1 | **FlexIT Initial** | baseline start none → 2020-04-06; baseline finish none → 2020-07-20 |
| 2 | **Planning** | baseline start none → 2020-04-06; baseline finish none → 2020-04-15 |
| 3 | Problem Definition | baseline start none → 2020-04-06; baseline finish none → 2020-04-07 |
| 4 | Feasibility Study | baseline start none → 2020-04-07; baseline finish none → 2020-04-15 |
| 5 | **Analysis** | baseline start none → 2020-04-15; baseline finish none → 2020-05-01 |
| 6 | Technical Analysis | baseline start none → 2020-04-15; baseline finish none → 2020-04-16 |
| 7 | System Analysis | baseline start none → 2020-04-15; baseline finish none → 2020-05-01 |
| 8 | **Design** | baseline start none → 2020-05-04; baseline finish none → 2020-06-03 |
| 9 | Technical Design | baseline start none → 2020-06-01; baseline finish none → 2020-06-03 |
| 10 | **Software Design** | baseline start none → 2020-05-04; baseline finish none → 2020-05-11 |
| 11 | System Design - Enrol. | baseline start none → 2020-05-04; baseline finish none → 2020-05-11 |
| 12 | System Design - Assess. | baseline start none → 2020-05-04; baseline finish none → 2020-05-11 |
| 13 | System Design - Report. | baseline start none → 2020-05-04; baseline finish none → 2020-05-11 |
| 14 | **Programming** | baseline start none → 2020-05-12; baseline finish none → 2020-06-18 |
| 15 | System Prog. - Enrol. | baseline start none → 2020-05-12; baseline finish none → 2020-06-18 |
| 16 | System Prog. - Assess. | baseline start none → 2020-05-12; baseline finish none → 2020-06-15 |
| 17 | System Prog. - Report. | baseline start none → 2020-05-12; baseline finish none → 2020-06-15 |
| 18 | **Implementation** | baseline start none → 2020-06-03; baseline finish none → 2020-06-19 |
| 19 | Hardware implementation | baseline start none → 2020-06-03; baseline finish none → 2020-06-09 |
| 20 | Software implementation | baseline start none → 2020-06-18; baseline finish none → 2020-06-19 |
| 21 | **Testing** | baseline start none → 2020-06-19; baseline finish none → 2020-07-14 |
| 22 | Enrol. System Testing | baseline start none → 2020-06-19; baseline finish none → 2020-07-14 |
| 23 | Assess. System Testing | baseline start none → 2020-06-19; baseline finish none → 2020-07-14 |
| 24 | Report. System Testing | baseline start none → 2020-06-19; baseline finish none → 2020-07-14 |
| 25 | User Training | baseline start none → 2020-07-14; baseline finish none → 2020-07-20 |

## Version 5 (saved 2020-03-30, file FLEXIT_AnalysisStage_MatthewPhyland.mpp)

Note of the change: week 6 complete

Last finish stays 2020-07-20. Complete tasks 0 → 3.

Changed:

| ID | Task | Start | Finish | Duration | Complete | Total float |
| --- | --- | --- | --- | --- | --- | --- |
| 1 | **FlexIT Initial** | 2020-04-06 A |  |  | 0% → 8% |  |
| 2 | **Planning** | 2020-04-06 A | 2020-04-15 A |  | 0% → 100% | 0d → none |
| 3 | Problem Definition | 2020-04-06 A | 2020-04-07 A |  | 0% → 100% | 0d → none |
| 4 | Feasibility Study | 2020-04-07 A | 2020-04-15 A |  | 0% → 100% | 0d → none |
| 5 | **Analysis** | 2020-04-15 A |  |  | 0% → 42% |  |
| 6 | Technical Analysis | 2020-04-15 A | 2020-04-16 → 2020-04-21 A (+5d) | 10h → 30h | 0% → 100% | 38.5d → none |
| 7 | System Analysis | 2020-04-15 A |  |  | 0% → 25% |  |
